Schedule from MS Project, 2015-11-27 to 2016-02-19, costs in $, A marks actual dates.

## Calendars

- Standard: Mon-Fri 08:00-12:00, 13:00-17:00; Sat-Sun off.

## Resources

| Resource | Rate | Notes |
| --- | --- | --- |
| Project Manager | 80 | Christopher Sigouin |
| Business Analyst | 60 | Behn |
| System Analyst | 60 | Johnathan Forester |
| DBA | 80 | Luke Fraser |
| Developer1 | 40 | Bill Miller - SCENARIO RELATED |
| Developer2 | 40 | Celia Goldring - SCENARIO RELATED |
| Networked Commerical Package | 2500 |  |
| Network and hardware installation | 5000 |  |

## Schedule

| ID | WBS | Task | Type | Duration | Start | Finish | Predecessors | Complete | Remaining | Total slack | Free slack | Deadline | Resources | Work | Actual work | Cost | Actual cost |
| --- | --- | --- | --- | --- | --- | --- | --- | --- | --- | --- | --- | --- | --- | --- | --- | --- | --- |
| 1 | 1 | Project Kickoff | manual | 1d | 2015-11-27 08:00 A | 2015-11-27 17:00 A |  | 100% |  |  |  |  | Business Analyst; DBA; Project Manager; System Analyst | 32h | 32h | 2,240 | 2,240 |
| 2 | 2 | **Iteration ONE** |  | 60d | 2015-11-30 08:00 A | 2016-02-19 17:00 |  | 10% | 53.73d |  |  | 2016-02-19 17:00 |  | 745.6h | 86.8h | 38,208 | 5,524 |
| 3 | 2.1 | Iteration phase begins | milestone, manual | 0d | 2015-11-30 08:00 A | 2015-11-30 08:00 A |  | 100% |  |  |  |  |  |  |  |  |  |
| 4 | 2.2 | **Identify the problem and obtain approval** |  | 2d | 2015-11-30 08:00 A | 2015-12-01 17:00 A |  | 100% |  |  |  | 2015-12-01 17:00 |  | 16h | 16h | 960 | 960 |
| 5 | 2.2.1 | Produce system goal statement |  | 0.25d | 2015-11-30 08:00 A | 2015-11-30 10:00 A | 3SS | 100% |  |  |  |  | Business Analyst | 2h | 2h | 120 | 120 |
| 6 | 2.2.2 | Preliminary research started |  | 0.5d | 2015-11-30 10:00 A | 2015-11-30 15:00 A | 5 | 100% |  |  |  |  | Business Analyst | 4h | 4h | 240 | 240 |
| 7 | 2.2.3 | Conduct feasibility study |  | 0.5d | 2015-11-30 15:00 A | 2015-12-01 10:00 A | 6 | 100% |  |  |  |  | Business Analyst | 4h | 4h | 240 | 240 |
| 8 | 2.2.4 | Prepare and submit project statement |  | 0.5d | 2015-12-01 10:00 A | 2015-12-01 15:00 A | 7 | 100% |  |  |  |  | Business Analyst | 4h | 4h | 240 | 240 |
| 9 | 2.2.5 | Obtain approval to proceed |  | 0.25d | 2015-12-01 15:00 A | 2015-12-01 17:00 A | 8 | 100% |  |  |  |  | Business Analyst | 2h | 2h | 120 | 120 |
| 10 | 2.3 | **Plan and monitor the project** |  | 2d | 2015-12-02 08:00 A | 2015-12-03 17:00 A |  | 100% |  |  |  | 2015-12-03 17:00 |  | 12.8h | 12.8h | 1,024 | 1,024 |
| 11 | 2.3.1 | Compile preliminary data into a work breakdown structure |  | 0.5d | 2015-12-02 08:00 A | 2015-12-02 12:00 A | 9 | 100% |  |  |  |  | Project Manager [80%] | 3.2h | 3.2h | 256 | 256 |
| 12 | 2.3.2 | Prepare and submit status reports |  | 0.5d | 2015-12-02 13:00 A | 2015-12-02 17:00 A | 11 | 100% |  |  |  |  | Project Manager [80%] | 3.2h | 3.2h | 256 | 256 |
| 13 | 2.3.3 | Develop procedures for interaction with New Century |  | 0.5d | 2015-12-03 08:00 A | 2015-12-03 12:00 A | 12 | 100% |  |  |  |  | Project Manager [80%] | 3.2h | 3.2h | 256 | 256 |
| 14 | 2.3.4 | Meeting(s) with associates |  | 0.5d | 2015-12-03 13:00 A | 2015-12-03 17:00 A | 13 | 100% |  |  |  |  | Project Manager [80%] | 3.2h | 3.2h | 256 | 256 |
| 15 | 2.4 | **Discover and understand details** |  | 4d | 2015-12-04 08:00 A | 2015-12-09 17:00 |  | 81% | 0.75d | 0d |  | 2015-12-09 17:00 |  | 64h | 52h | 3,840 | 3,120 |
| 16 | 2.4.1 | Interview patients and personnel of New Century |  | 1d | 2015-12-04 08:00 A | 2015-12-04 17:00 A | 14 | 100% |  |  |  |  | Business Analyst; System Analyst | 16h | 16h | 960 | 960 |
| 17 | 2.4.2 | Determine the main functional areas of the system(s) |  | 1d | 2015-12-07 08:00 A | 2015-12-07 17:00 A | 16 | 100% |  |  |  |  | Business Analyst; System Analyst | 16h | 16h | 960 | 960 |
| 18 | 2.4.3 | Define implementation requirements |  | 0.5d | 2015-12-08 08:00 A | 2015-12-08 12:00 A | 17 | 100% |  |  |  |  | Business Analyst; System Analyst | 8h | 8h | 480 | 480 |
| 19 | 2.4.4 | Produce analysis diagrams |  | 1.5d | 2015-12-08 13:00 A | 2015-12-09 17:00 | 18 | 50% | 0.75d | 0d |  |  | Business Analyst; System Analyst | 24h | 12h | 1,440 | 720 |
| 20 | 2.5 | **Design system components** |  | 13d | 2015-11-30 08:00 A | 2015-12-16 17:00 |  | 2% | 12.7d | 0d |  | 2015-12-16 17:00 |  | 68.8h | 6h | 5,024 | 420 |
| 21 | 2.5.1 | Research and document all architecture required |  | 0.5d | 2015-12-10 08:00 A | 2015-12-10 12:00 | 19 | 25% | 0.38d | 0.12d | 0d |  | DBA; System Analyst | 8h | 2h | 560 | 140 |
| 22 | 2.5.2 | Produce design diagrams |  | 0.5d | 2015-12-10 13:00 | 2015-12-10 17:00 | 21 |  |  | 0.12d | 0d |  | DBA; System Analyst | 8h |  | 560 |  |
| 23 | 2.5.3 | Create user input designs for reporting |  | 0.5d | 2015-12-11 08:00 A | 2015-12-11 12:00 | 22 | 25% | 0.38d | 0.12d | 0d |  | DBA; System Analyst | 8h | 2h | 560 | 140 |
| 24 | 2.5.4 | Design report types requested by Dr. Jones |  | 0.5d | 2015-12-11 13:00 A | 2015-12-11 17:00 | 23 | 25% | 0.38d | 0d |  |  | DBA; System Analyst | 8h | 2h | 560 | 140 |
| 25 | 2.5.5 | Produce database design needs |  | 0.5d | 2015-12-14 08:00 | 2015-12-14 12:00 | 24 |  |  | 0d |  |  | DBA; System Analyst | 8h |  | 560 |  |
| 26 | 2.5.6 | Complete support processing needs |  | 0.5d | 2015-12-14 13:00 | 2015-12-14 17:00 | 25 |  |  | 0d |  |  | DBA; System Analyst | 8h |  | 560 |  |
| 27 | 2.5.7 | Create management summary |  | 13d | 2015-11-30 08:00 | 2015-12-16 17:00 | 5SS |  |  | 0d |  |  | Project Manager [20%] | 20.8h |  | 1,664 |  |

| ID | WBS | Task | Duration | Start | Finish | Predecessors | Total slack | Constraint | Deadline | Resources | Work | Cost |
| --- | --- | --- | --- | --- | --- | --- | --- | --- | --- | --- | --- | --- |
| 28 | 2.6 | **Build, test and integrate system components** | 24d | 2015-12-15 08:00 | 2016-01-15 17:00 |  | 0d |  | 2016-01-15 17:00 |  | 384h | 15,360 |
| 29 | 2.6.1 | Development of the insurance system with Bill & Celia | 24d | 2015-12-15 08:00 | 2016-01-15 17:00 | 26 | 0d | start no earlier than 2015-12-15 08:00 |  | Developer1; Developer2 | 384h | 15,360 |
| 30 | 2.7 | **Complete system tests and deploy the solution** | 25d | 2016-01-18 08:00 | 2016-02-19 17:00 |  | 0d |  | 2016-02-19 17:00 |  | 200h | 12,000 |
| 31 | 2.7.1 | Test new system for 3 month period as per contract | 25d | 2016-01-18 08:00 | 2016-02-19 17:00 | 29 | 0d | start no earlier than 2016-01-18 08:00 |  | System Analyst | 200h | 12,000 |
